任务ID,任务名称,CPM确定性工期_PERT期望值,最早开始ES,最早完成EF,最迟开始LS,最迟完成LF,总时差TF,CPM关键任务
T01,项目启动与干系人识别,3.1666666666666665,0.0,3.1666666666666665,0.0,3.166666666666665,0.0,是
T02,调研预约流程与现有规则,5.166666666666667,3.1666666666666665,8.333333333333334,3.166666666666665,8.333333333333332,0.0,是
T03,需求分析与范围确认,6.333333333333333,8.333333333333334,14.666666666666668,8.333333333333332,14.666666666666664,0.0,是
T04,预约冲突规则澄清与确认,5.333333333333333,14.666666666666668,20.0,14.666666666666664,19.999999999999996,0.0,是
T05,原型评审与需求基线冻结,3.3333333333333335,20.0,23.333333333333332,19.999999999999996,23.33333333333333,0.0,是
T06,总体架构与技术方案设计,5.166666666666667,23.333333333333332,28.5,23.33333333333333,28.499999999999996,0.0,是
T07,数据模型与数据库设计,5.166666666666667,28.5,33.666666666666664,28.499999999999996,33.666666666666664,0.0,是
T08,接口契约与接口模拟设计,4.166666666666667,28.5,32.666666666666664,29.499999999999996,33.666666666666664,0.9999999999999964,否
T09,用户角色与权限模块开发,7.333333333333333,33.666666666666664,41.0,42.166666666666664,49.5,8.5,否
T10,实验室与开放时段管理模块开发,6.333333333333333,33.666666666666664,40.0,43.166666666666664,49.5,9.5,否
T11,预约申请与取消模块开发,8.5,33.666666666666664,42.166666666666664,34.666666666666664,43.166666666666664,1.0,否
T12,冲突检测与预约确认模块开发,9.5,33.666666666666664,43.166666666666664,33.666666666666664,43.166666666666664,0.0,是
T13,通知与预约记录查询模块开发,6.333333333333333,43.166666666666664,49.5,43.166666666666664,49.5,0.0,是
T14,前后端接口联调,8.666666666666666,49.5,58.166666666666664,49.5,58.166666666666664,0.0,是
T15,模块单元测试与模块内缺陷修复,7.833333333333333,49.5,57.333333333333336,50.33333333333333,58.166666666666664,0.8333333333333286,否
T16,集成测试与业务场景测试,10.833333333333334,58.166666666666664,69.0,58.166666666666664,69.0,0.0,是
T17,用户验收测试与需求返工,7.666666666666667,69.0,76.66666666666667,69.0,76.66666666666667,0.0,是
T18,上线准备、文档整理与结项,4.333333333333333,76.66666666666667,81.0,76.66666666666667,81.0,0.0,是
